# group3

Schedule from MS Project, 2022-09-05 to 2023-03-26, costs in ৳, A marks actual dates.

## Calendars

- Standard: Mon-Thu 08:00-12:00, 13:00-17:00; Fri-Sat off; Sun 08:00-12:00, 13:00-17:00. Exceptions (off unless hours are given): 2022-10-05 (Durga puja), 2022-10-09 (Eid-e-miladunnabi), 2022-10-21 to 2022-10-29 (Mid-break), 2022-12-16 to 2022-12-31 (Preparatory Leave), 2023-01-20 to 2023-01-28 (Term End Break).

## Resources

| Resource | Rate | Cost per use |
| --- | --- | --- |
| Md Tausiful Haque |  |  |
| Jamal Uddin Tanvin |  |  |
| Nurshat Fateh Ali |  |  |
| Rifat Islam |  |  |
| PC |  |  |
| Bluetooth Module | 600 | 600 |
| Temperature Sensor | 1500 | 1500 |
| Blood Pressure Machine | 2000 | 2000 |
| Oxymeter | 400 | 400 |
| Cloud Service | 10000 | 10000 |

## Schedule

| ID | WBS | Task | Type | Duration | Start | Finish | Predecessors | Complete | Remaining | Baseline start | Baseline finish | Baseline duration | Total slack | Free slack | Constraint | Resources | Work | Actual work | Cost | Baseline cost |
| --- | --- | --- | --- | --- | --- | --- | --- | --- | --- | --- | --- | --- | --- | --- | --- | --- | --- | --- | --- | --- |
| 1 | 1 | **IDP** |  | 123d | 2022-09-05 A | 2023-03-26 |  | 19% | 100.05d | 2022-09-05 | 2023-04-02 | 127d | 0d |  |  |  | 2064h | 568h | 36,800 | 36,800 |
| 2 | 1.1 | **IDP 1** |  | 42d | 2022-09-05 A | 2022-11-10 |  | 53% | 19.66d | 2022-09-05 | 2022-10-06 | 23d | -19d | 0d |  |  | 952h | 568h |  |  |
| 3 | 1.1.1 | **Project Initialization** |  | 7d | 2022-09-05 A | 2022-09-13 A |  | 100% |  | 2022-09-05 | 2022-09-13 | 7d |  |  |  |  | 224h | 224h |  |  |
| 4 | 1.1.1.1 | Team Member Selecition |  | 1d | 2022-09-05 A | 2022-09-05 A |  | 100% |  | 2022-09-05 | 2022-09-05 | 1d |  |  | finish no earlier than 2022-09-05 | Jamal Uddin Tanvin; Md Tausiful Haque; Nurshat Fateh Ali; Rifat Islam | 32h | 32h |  |  |
| 5 | 1.1.1.2 | Idea Proposal |  | 5d | 2022-09-06 A | 2022-09-12 A | 4 | 100% |  | 2022-09-06 | 2022-09-12 | 5d |  |  |  | Jamal Uddin Tanvin; Md Tausiful Haque; Nurshat Fateh Ali; Rifat Islam | 160h | 160h |  |  |
| 6 | 1.1.1.3 | Discussion on project Proposal |  | 1d | 2022-09-13 A | 2022-09-13 A | 5 | 100% |  | 2022-09-13 | 2022-09-13 | 1d |  |  |  | Jamal Uddin Tanvin; Md Tausiful Haque; Nurshat Fateh Ali; Rifat Islam | 32h | 32h |  |  |
| 7 | 1.1.1.4 | Project Idea Approval | milestone | 0d | 2022-09-05 A | 2022-09-05 A | 4 | 100% |  | 2022-09-05 | 2022-09-05 | 0d |  |  |  | Jamal Uddin Tanvin; Md Tausiful Haque; Nurshat Fateh Ali; Rifat Islam |  |  |  |  |
| 8 | 1.1.2 | **Detail Project Proposal Submission** |  | 9d | 2022-09-06 A | 2022-09-18 A |  | 100% |  | 2022-09-06 | 2022-09-18 | 9d |  |  |  |  | 112h | 112h |  |  |
| 9 | 1.1.2.1 | Market Analysis |  | 4d | 2022-09-06 A | 2022-09-11 A | 7 | 100% |  | 2022-09-06 | 2022-09-11 | 4d |  |  |  | Jamal Uddin Tanvin; Nurshat Fateh Ali | 64h | 64h |  |  |
| 10 | 1.1.2.2 | Revision on Objectives and Outcomes |  | 3d | 2022-09-14 A | 2022-09-18 A | 6 | 100% |  | 2022-09-14 | 2022-09-18 | 3d |  |  |  | Md Tausiful Haque; Rifat Islam | 48h | 48h |  |  |
| 11 | 1.1.3 | **Project Scheduling** |  | 8d | 2022-09-19 A | 2022-09-28 A |  | 100% |  | 2022-09-19 | 2022-09-28 | 8d |  |  |  |  | 184h | 184h |  |  |
| 12 | 1.1.3.1 | Create work breakdown structure |  | 2d | 2022-09-19 A | 2022-09-20 A | 10 | 100% |  | 2022-09-19 | 2022-09-20 | 2d |  |  |  | Jamal Uddin Tanvin; PC | 16h | 16h |  |  |
| 13 | 1.1.3.2 | Project Plan documentation submission |  | 3d | 2022-09-21 A | 2022-09-25 A | 12 | 100% |  | 2022-09-21 | 2022-09-25 | 3d |  |  |  | Md Tausiful Haque; Nurshat Fateh Ali; Rifat Islam | 72h | 72h |  |  |
| 14 | 1.1.3.3 | Literature Review |  | 3d | 2022-09-26 A | 2022-09-28 A | 13 | 100% |  | 2022-09-26 | 2022-09-28 | 3d |  |  |  | Jamal Uddin Tanvin; Md Tausiful Haque; Nurshat Fateh Ali; Rifat Islam | 96h | 96h |  |  |
| 15 | 1.1.4 | **Documentation** |  | 16d | 2022-09-26 A | 2022-10-19 |  | 23% | 12.31d | 2022-09-26 | 2022-10-06 | 8d | -10d | 0d |  |  | 200h | 48h |  |  |
| 16 | 1.1.4.1 | **Planing** |  | 10d | 2022-09-26 A | 2022-10-11 |  | 43% | 5.71d | 2022-09-26 | 2022-10-06 | 8d | -4d | 0d |  |  | 112h | 48h |  |  |
| 17 | 1.1.4.1.1 | **Initial Analysis** |  | 6d | 2022-09-26 A | 2022-10-03 A |  | 100% |  | 2022-09-26 | 2022-10-03 | 6d |  |  |  |  | 48h | 48h |  |  |
| 18 | 1.1.4.1.1.1 | Requirement Analysis |  | 1d | 2022-09-26 A | 2022-09-26 A | 13 | 100% |  | 2022-09-26 | 2022-09-26 | 1d |  |  |  | Jamal Uddin Tanvin; Nurshat Fateh Ali | 16h | 16h |  |  |
| 19 | 1.1.4.1.1.2 | Define Preliminary Resources |  | 1d | 2022-09-29 A | 2022-09-29 A | 18 | 100% |  | 2022-09-29 | 2022-09-29 | 1d |  |  |  | Rifat Islam; Nurshat Fateh Ali | 16h | 16h |  |  |
| 20 | 1.1.4.1.1.3 | Project Plan Analysis |  | 1d | 2022-10-03 A | 2022-10-03 A | 19 | 100% |  | 2022-10-03 | 2022-10-03 | 1d |  |  |  | Md Tausiful Haque; Nurshat Fateh Ali | 16h | 16h |  |  |
| 21 | 1.1.4.1.1.4 | Analysis Complete | milestone | 0d | 2022-10-03 A | 2022-10-03 A | 20 | 100% |  | 2022-10-03 | 2022-10-03 | 0d |  |  |  | Rifat Islam |  |  |  |  |
| 22 | 1.1.4.1.2 | **Detailed Planning** |  | 4d | 2022-10-04 | 2022-10-11 | 21 |  |  | 2022-10-02 | 2022-10-06 | 4d | -19d | 0d |  |  | 64h |  |  |  |
| 23 | 1.1.4.1.2.1 | Define Project Features |  | 4d | 2022-10-04 | 2022-10-11 | 21 |  |  | 2022-10-02 | 2022-10-06 | 4d | -19d | 0d |  | Jamal Uddin Tanvin; Md Tausiful Haque | 64h |  |  |  |
| 24 | 1.1.4.1.2.2 | Planing Complete | milestone | 0d | 2022-10-11 | 2022-10-11 | 23 |  |  | 2022-10-02 | 2022-10-02 | 0d | -19d | 0d |  | Nurshat Fateh Ali; Rifat Islam |  |  |  |  |

| ID | WBS | Task | Duration | Start | Finish | Predecessors | Baseline start | Baseline finish | Baseline duration | Total slack | Free slack | Constraint | Resources | Work | Cost | Baseline cost |
| --- | --- | --- | --- | --- | --- | --- | --- | --- | --- | --- | --- | --- | --- | --- | --- | --- |
| 25 | 1.1.4.2 | **System Architecture** | 3d | 2022-10-12 | 2022-10-16 | 16 | 2022-10-02 | 2022-10-02 | 1d | -19d | 0d |  |  | 64h |  |  |
| 26 | 1.1.4.2.1 | Design System Architecture | 1d | 2022-10-12 | 2022-10-12 | 23 | 2022-10-02 | 2022-10-02 | 1d | -19d | 0d |  | Nurshat Fateh Ali; Rifat Islam | 16h |  |  |
| 27 | 1.1.4.2.2 | Proper Representation of the Structure | 1d | 2022-10-13 | 2022-10-13 | 26 | 2022-10-02 | 2022-10-02 | 1d | -19d | 0d |  | Md Tausiful Haque; Nurshat Fateh Ali | 16h |  |  |
| 28 | 1.1.4.2.3 | System Architecture Complete | 1d | 2022-10-16 | 2022-10-16 | 27 | 2022-10-02 | 2022-10-02 | 1d | -19d | 0d |  | Jamal Uddin Tanvin; Md Tausiful Haque; Nurshat Fateh Ali; Rifat Islam | 32h |  |  |
| 29 | 1.1.4.3 | **SRS Document** | 3d | 2022-10-17 | 2022-10-19 | 25 | 2022-10-02 | 2022-10-02 | 1d | -19d | 0d |  |  | 24h |  |  |
| 30 | 1.1.4.3.1 | Create System Modeling Diagrams | 1d | 2022-10-17 | 2022-10-17 | 28 | 2022-10-02 | 2022-10-02 | 1d | -19d | 0d |  | Jamal Uddin Tanvin | 8h |  |  |
| 31 | 1.1.4.3.2 | Determine Project Scope | 1d | 2022-10-18 | 2022-10-18 | 30 | 2022-10-02 | 2022-10-02 | 1d | -19d | 0d |  | Nurshat Fateh Ali | 8h |  |  |
| 32 | 1.1.4.3.3 | SRS Document Submission | 1d | 2022-10-19 | 2022-10-19 | 31 | 2022-10-02 | 2022-10-02 | 1d | -19d | 0d |  | Md Tausiful Haque | 8h |  |  |
| 33 | 1.1.5 | **Concept** | 4d | 2022-10-20 | 2022-11-01 | 29 | 2022-10-02 | 2022-10-02 | 1d | -19d | 0d |  |  | 112h |  |  |
| 34 | 1.1.5.1 | Determine UI Functionalities | 1d | 2022-10-20 | 2022-10-20 | 32 | 2022-10-02 | 2022-10-02 | 1d | -19d | 0d |  | Nurshat Fateh Ali; Rifat Islam | 16h |  |  |
| 35 | 1.1.5.2 | Hardware Interfacing Concept Generalization | 1d | 2022-10-30 | 2022-10-30 | 34 | 2022-10-02 | 2022-10-02 | 1d | -19d | 0d |  | Jamal Uddin Tanvin; Rifat Islam | 16h |  |  |
| 36 | 1.1.5.3 | App Development concept | 1d | 2022-10-30 | 2022-10-30 | 34 | 2022-10-02 | 2022-10-02 | 1d | -18d | 0d |  | Md Tausiful Haque; Nurshat Fateh Ali | 16h |  |  |
| 37 | 1.1.5.4 | Machine Learning concept Gathering | 1d | 2022-10-31 | 2022-10-31 | 35 | 2022-10-02 | 2022-10-02 | 1d | -19d | 0d |  | Jamal Uddin Tanvin; Md Tausiful Haque; Nurshat Fateh Ali; Rifat Islam | 32h |  |  |
| 38 | 1.1.5.5 | Concept Generalization Complete | 1d | 2022-11-01 | 2022-11-01 | 37, 34, 35, 36 | 2022-10-02 | 2022-10-02 | 1d | -19d | 0d |  | Jamal Uddin Tanvin; Md Tausiful Haque; Nurshat Fateh Ali; Rifat Islam | 32h |  |  |
| 39 | 1.1.6 | **Project Prototype Design** | 5d | 2022-11-02 | 2022-11-08 | 38 | 2022-10-02 | 2022-10-02 | 1d | -19d | 0d |  |  | 80h |  |  |
| 40 | 1.1.6.1 | Determine software specification | 1d | 2022-11-02 | 2022-11-02 | 38 | 2022-10-02 | 2022-10-02 | 1d | -19d | 0d |  | Nurshat Fateh Ali | 8h |  |  |
| 41 | 1.1.6.2 | Detailed system designing | 1d | 2022-11-03 | 2022-11-03 | 40 | 2022-10-02 | 2022-10-02 | 1d | -19d | 0d |  | Jamal Uddin Tanvin; Md Tausiful Haque; Nurshat Fateh Ali; Rifat Islam | 32h |  |  |
| 42 | 1.1.6.3 | Comprehensive UI design | 1d | 2022-11-06 | 2022-11-06 | 41 | 2022-10-02 | 2022-10-02 | 1d | -19d | 0d |  | Nurshat Fateh Ali; Rifat Islam | 16h |  |  |
| 43 | 1.1.6.4 | Prototype design Complete | 1d | 2022-11-07 | 2022-11-07 | 42 | 2022-10-02 | 2022-10-02 | 1d | -19d | 0d |  | Nurshat Fateh Ali; Rifat Islam | 16h |  |  |
| 44 | 1.1.6.5 | Prototype design document submission | 1d | 2022-11-08 | 2022-11-08 | 43 | 2022-10-02 | 2022-10-02 | 1d | -19d | 0d |  | Rifat Islam | 8h |  |  |
| 45 | 1.1.7 | **Final Submission** | 2d | 2022-11-09 | 2022-11-10 | 39 | 2022-10-02 | 2022-10-02 | 1d | -19d | 0d |  |  | 40h |  |  |
| 46 | 1.1.7.1 | Final presentation and Demonstation | 1d | 2022-11-09 | 2022-11-09 | 43 | 2022-10-02 | 2022-10-02 | 1d | -19d | 0d |  | Jamal Uddin Tanvin; Md Tausiful Haque; Nurshat Fateh Ali; Rifat Islam | 32h |  |  |
| 47 | 1.1.7.2 | Final Submission | 1d | 2022-11-10 | 2022-11-10 | 46 | 2022-10-02 | 2022-10-02 | 1d | -19d | 0d |  | Md Tausiful Haque | 8h |  |  |
| 48 | 1.2 | **IDP 2** | 99d | 2022-10-11 | 2023-03-26 | 2 | 2022-10-02 | 2023-04-02 | 108d | -1d | 0d |  |  | 1112h | 36,800 | 36,800 |
| 49 | 1.2.1 | **Field work** | 81d | 2022-11-13 | 2023-03-26 | 46 | 2022-10-02 | 2023-03-26 | 104d | -19d | 0d |  |  | 32h |  |  |
| 50 | 1.2.1.1 | Sensor Study | 1d | 2023-03-26 | 2023-03-26 | 46 | 2023-03-26 | 2023-03-26 | 1d | 0d |  | start no earlier than 2023-03-25 | Jamal Uddin Tanvin; Rifat Islam | 16h |  |  |
| 51 | 1.2.1.2 | Expert consultation | 1d | 2022-11-13 | 2022-11-13 | 46 | 2022-10-02 | 2022-10-02 | 1d | -19d | 0d |  | Nurshat Fateh Ali; Md Tausiful Haque | 16h |  |  |

| ID | WBS | Task | Type | Duration | Start | Finish | Predecessors | Baseline start | Baseline finish | Baseline duration | Total slack | Free slack | Resources | Work | Cost | Baseline cost |
| --- | --- | --- | --- | --- | --- | --- | --- | --- | --- | --- | --- | --- | --- | --- | --- | --- |
| 52 | 1.2.2 | **Design** |  | 25d | 2022-10-11 | 2022-11-21 | 51 | 2022-10-02 | 2023-04-02 | 108d | 0d |  |  | 160h |  |  |
| 53 | 1.2.2.1 | Final app UI design |  | 5d | 2022-11-14 | 2022-11-20 | 51 | 2022-10-02 | 2022-10-10 | 5d | 18d | 1d | Md Tausiful Haque | 40h |  |  |
| 54 | 1.2.2.2 | Database architecture design |  | 6d | 2022-11-14 | 2022-11-21 | 51 | 2022-10-02 | 2022-10-11 | 6d | 17d | 0d | Rifat Islam | 48h |  |  |
| 55 | 1.2.2.3 | cloud system design |  | 5d | 2022-11-14 | 2022-11-20 | 51 | 2022-10-02 | 2022-10-10 | 5d | 18d | 1d | Nurshat Fateh Ali | 40h |  |  |
| 56 | 1.2.2.4 | hardware system design |  | 4d | 2022-11-14 | 2022-11-17 | 51 | 2023-03-27 | 2023-04-02 | 4d | 19d | 2d | Jamal Uddin Tanvin | 32h |  |  |
| 57 | 1.2.2.5 | Design complete | milestone, manual | 0d | 2022-10-11 | 2022-10-11 |  |  |  |  |  |  |  |  |  |  |
| 58 | 1.2.3 | **Development** |  | 44d | 2022-11-22 | 2023-02-12 | 52 | 2022-10-02 | 2022-11-27 | 34d | 17d |  |  | 720h | 36,800 | 36,800 |
| 59 | 1.2.3.1 | **software development** |  | 31d | 2022-11-22 | 2023-01-17 | 53, 54, 55, 56 | 2022-10-02 | 2022-11-08 | 21d | 17d |  |  | 584h | 20,000 | 20,000 |
| 60 | 1.2.3.1.1 | Android app development |  | 10d | 2022-11-22 | 2022-12-05 | 57 | 2022-10-02 | 2022-10-17 | 10d | 17d | 0d | Md Tausiful Haque; Nurshat Fateh Ali; PC | 160h |  |  |
| 61 | 1.2.3.1.2 | ML algorithm development |  | 2d | 2022-11-22 | 2022-11-23 | 57 | 2022-10-02 | 2022-10-03 | 2d | 30d | 0d | Jamal Uddin Tanvin; PC; Rifat Islam | 32h |  |  |
| 62 | 1.2.3.1.3 | ML algorithm implimentation |  | 5d | 2022-11-24 | 2022-11-30 | 61 | 2022-10-02 | 2022-10-10 | 5d | 30d | 13d | Jamal Uddin Tanvin; PC; Rifat Islam | 80h |  |  |
| 63 | 1.2.3.1.4 | database implimentation |  | 10d | 2022-12-06 | 2023-01-02 | 60 | 2022-10-02 | 2022-10-17 | 10d | 17d | 0d | Md Tausiful Haque; Nurshat Fateh Ali; PC | 160h |  |  |
| 64 | 1.2.3.1.5 | Cloud services implimentation |  | 8d | 2023-01-03 | 2023-01-12 | 61, 62, 63 | 2022-10-18 | 2022-11-03 | 8d | 17d | 0d | Cloud Service; Jamal Uddin Tanvin; Nurshat Fateh Ali; PC | 128h | 20,000 | 20,000 |
| 65 | 1.2.3.1.6 | Google API connect |  | 3d | 2023-01-15 | 2023-01-17 | 64 | 2022-11-06 | 2022-11-08 | 3d | 17d | 0d | PC; Rifat Islam | 24h |  |  |
| 66 | 1.2.3.2 | **Hardware Implimentation** |  | 13d | 2023-01-18 | 2023-02-12 |  | 2022-11-09 | 2022-11-27 | 13d | 17d |  |  | 136h | 16,800 | 16,800 |
| 67 | 1.2.3.2.1 | Sensor configuration |  | 7d | 2023-01-18 | 2023-02-02 | 65 | 2022-11-09 | 2022-11-17 | 7d | 17d | 0d | Blood Pressure Machine; Bluetooth Module; Jamal Uddin Tanvin; Oxymeter; Temperature Sensor | 56h | 9,000 | 9,000 |
| 68 | 1.2.3.2.2 | Hardware interfacing |  | 4d | 2023-02-05 | 2023-02-08 | 67 | 2022-11-20 | 2022-11-23 | 4d | 17d | 0d | Blood Pressure Machine; Jamal Uddin Tanvin; Oxymeter; PC; Rifat Islam; Temperature Sensor | 64h | 7,800 | 7,800 |
| 69 | 1.2.3.2.3 | Hardware testing |  | 2d | 2023-02-09 | 2023-02-12 | 68 | 2022-11-24 | 2022-11-27 | 2d | 17d | 0d | Md Tausiful Haque; PC | 16h |  |  |
| 70 | 1.2.4 | **Integration** |  | 8d | 2023-02-13 | 2023-02-22 |  | 2022-11-28 | 2022-12-07 | 8d | 17d |  |  | 128h |  |  |
| 71 | 1.2.4.1 | Combine hardware with developed software |  | 4d | 2023-02-13 | 2023-02-16 | 64, 69 | 2022-11-28 | 2022-12-01 | 4d | 17d | 0d | Jamal Uddin Tanvin; Md Tausiful Haque; PC | 64h |  |  |
| 72 | 1.2.4.2 | initialize database and cloud services |  | 2d | 2023-02-19 | 2023-02-20 | 71 | 2022-12-04 | 2022-12-05 | 2d | 17d | 0d | Nurshat Fateh Ali; PC; Rifat Islam | 32h |  |  |
| 73 | 1.2.4.3 | Code modification |  | 2d | 2023-02-21 | 2023-02-22 | 72 | 2022-12-06 | 2022-12-07 | 2d | 17d | 0d | Nurshat Fateh Ali; Rifat Islam | 32h |  |  |
| 74 | 1.2.4.4 | Interation complete | milestone | 0d | 2023-02-22 | 2023-02-22 | 73 | 2022-12-07 | 2022-12-07 | 0d | 17d | 0d |  |  |  |  |
| 75 | 1.2.5 | **Testing** |  | 5d | 2023-02-23 | 2023-03-01 |  | 2022-12-08 | 2022-12-14 | 5d | 17d |  |  | 64h |  |  |
| 76 | 1.2.5.1 | Testing in different scenarios |  | 2d | 2023-02-23 | 2023-02-26 | 74 | 2022-12-08 | 2022-12-11 | 2d | 17d | 0d | Jamal Uddin Tanvin | 16h |  |  |
| 77 | 1.2.5.2 | Review test report |  | 1d | 2023-02-27 | 2023-02-27 | 76 | 2022-12-12 | 2022-12-12 | 1d | 17d | 0d | Jamal Uddin Tanvin; Md Tausiful Haque | 16h |  |  |
| 78 | 1.2.5.3 | Final project manipulation |  | 2d | 2023-02-28 | 2023-03-01 | 77 | 2022-12-13 | 2022-12-14 | 2d | 17d |  | Jamal Uddin Tanvin; Md Tausiful Haque; PC | 32h |  |  |

| ID | WBS | Task | Type | Duration | Start | Finish | Predecessors | Baseline start | Baseline finish | Baseline duration | Total slack | Resources | Work |
| --- | --- | --- | --- | --- | --- | --- | --- | --- | --- | --- | --- | --- | --- |
| 79 | 1.2.6 | **Final project Submission** |  | 1d | 2023-02-27 | 2023-02-28 |  | 2022-12-12 | 2022-12-13 | 1d | 18d |  | 8h |
| 80 | 1.2.6.1 | Project document |  | 1d | 2023-02-28 | 2023-02-28 | 77 | 2022-12-13 | 2022-12-13 | 1d | 18d | Nurshat Fateh Ali | 8h |
| 81 | 1.2.6.2 | project submission | milestone | 0d | 2023-02-27 | 2023-02-27 | 77 | 2022-12-12 | 2022-12-12 | 0d | 19d | Jamal Uddin Tanvin; Md Tausiful Haque; Nurshat Fateh Ali; Rifat Islam |  |
| 82 | 1.2.6.3 | Final presentation | milestone | 0d | 2023-02-27 | 2023-02-27 | 77 | 2022-12-12 | 2022-12-12 | 0d | 19d | Jamal Uddin Tanvin; Md Tausiful Haque; Nurshat Fateh Ali; Rifat Islam |  |
